# CRONOGRAMA PANCE 3.0

Schedule from MS Project, 2024-04-11 to 2024-06-15, 11 hours a day.

## Calendars

- Estándar: Mon-Sun 07:00-18:00.

## Resources

| Resource |
| --- |
| R |
| Compras |
| Entrega |

## Schedule

| ID | WBS | Task | Type | Duration | Start | Finish | Predecessors | Total slack | Free slack | Resources |
| --- | --- | --- | --- | --- | --- | --- | --- | --- | --- | --- |
| 1 | 1 | **Proyecto CCTV Corazon de Pance** |  | 66d | 2024-04-11 | 2024-06-15 |  | 0d |  |  |
| 2 | 1.1 | **Pre-alistamiento personal GYL** |  | 8d | 2024-04-11 | 2024-04-18 |  | 0d |  |  |
| 3 | 1.1.1 | ACTIVIDAD 1.1: Prueba practica de enlace y marcación de puntos de instalación de postes. |  | 4d | 2024-04-11 | 2024-04-14 |  | 0d |  |  |
| 4 | 1.1.2 | ACTIVIDAD 1.2: Marcado de rutas de poste a bienestar. |  | 4d | 2024-04-15 | 2024-04-18 | 3 | 0d |  |  |
| 5 | 1.2 | **Actividades CCTV frente 1** |  | 58d | 2024-04-11 | 2024-06-07 |  | 0d |  |  |
| 6 | 1.2.1 | Orden de compra equipos cuarto cctv | milestone | 0d | 2024-04-11 | 2024-04-11 |  | 0d |  |  |
| 7 | 1.2.2 | Entrega equipos cuarto cctv | milestone | 0d | 2024-04-18 | 2024-04-18 | 6FS+8d | 0d |  |  |
| 8 | 1.2.3 | ACTIVIDAD 2: Instalación y conexión de equipos en cuarto CCTV. |  | 4d | 2024-04-19 | 2024-04-22 | 4, 7 | 0d |  |  |
| 9 | 1.2.4 | ACTIVIDAD 2.1: Configuración e integración de equipos(46 Radios,76Camaras,3Nvr,1Switch,1Router,1Ups,) al sistema CCTV. |  | 46d | 2024-04-23 | 2024-06-07 | 8 | 0d |  |  |
| 10 | 1.2.5 | Instalacion de dos camaras en CCTV |  | 1d | 2024-04-23 | 2024-04-23 | 8 | 53d |  |  |
| 11 | 1.3 | **Actividades CCTV frente 2** |  | 62d | 2024-04-11 | 2024-06-11 |  | 4d |  |  |
| 12 | 1.3.1 | ACTIVIDAD 3: Excavación a máquina 27 huecos |  | 5d | 2024-04-19 | 2024-04-23 | 4 | 23d | 0d |  |
| 13 | 1.3.2 | ACTIVIDAD 3.1: Excavación a máquina 1100(19 tramos) metros lineales aproximadamente,ademas de intalacion y tapado de tuberia pvc de 3/4 |  | 30d | 2024-04-24 | 2024-05-23 | 12 | 23d |  |  |
| 14 | 1.3.3 | Orden de compra poste | milestone | 0d | 2024-04-11 | 2024-04-11 |  | 13d | 0d | Compras |
| 15 | 1.3.4 | Entrega poste | milestone | 0d | 2024-05-05 | 2024-05-05 | 14FS+25d | 13d | 0d | Entrega |
| 16 | 1.3.5 | ACTIVIDAD 3.2: Excavación manual 5 huecos |  | 10d | 2024-04-19 | 2024-04-28 | 4 | 20d | 7d |  |
| 17 | 1.3.6 | ACTIVIDAD 3.3: Hincado de postes |  | 11d | 2024-05-06 | 2024-05-16 | 15, 16 | 13d | 9d |  |
| 18 | 1.3.7 | Orden de compra equipo para poste | milestone | 0d | 2024-04-11 | 2024-04-11 |  | 4d | 0d | Compras |
| 19 | 1.3.8 | Entrega de equipos para poste | milestone | 0d | 2024-05-25 | 2024-05-25 | 18FS+45d | 4d | 0d | Entrega |
| 20 | 1.3.9 | ACTIVIDAD 3.4: Instalación de equipos en poste. |  | 17d | 2024-05-26 | 2024-06-11 | 24, 17, 19 | 4d |  |  |
| 21 | 1.4 | **Actividades CCTV frente 3** |  | 66d | 2024-04-11 | 2024-06-15 |  | 0d |  |  |
| 22 | 1.4.1 | Orden de compra gabinetes | milestone | 0d | 2024-04-11 | 2024-04-11 |  | 5d | 0d | Compras |
| 23 | 1.4.2 | Entrega gabinetes | milestone | 0d | 2024-04-30 | 2024-04-30 | 22FS+20d | 5d | 0d | Entrega |
| 24 | 1.4.3 | ACTIVIDAD 4: Armado de 32 tableros con sistema fotovoltaico o energía convencional. |  | 16d | 2024-05-01 | 2024-05-16 | 4, 23 | 5d | 0d |  |
| 25 | 1.4.4 | ACTIVIDAD 4.1: Instalación de equipos en bienestar A, B y C. |  | 21d | 2024-05-17 | 2024-06-06 | 24 | 5d | 0d |  |
| 26 | 1.4.5 | Actividad 4.2: Instalacion de camaras en taquilla y cuarto de residuos |  | 4d | 2024-06-07 | 2024-06-10 | 25 | 5d |  |  |
| 27 | 1.4.6 | ACTIVIDAD 5: Pruebas del funcionamiento de los diferentes equipos y capacitación. (1persona) |  | 8d | 2024-06-08 | 2024-06-15 | 9 | 0d |  |  |
